# 丽泽项目上线计划

Schedule from MS Project, 2018-02-22 to 2018-03-10, A marks actual dates.
ASG Software Solutions
The Project Management template plan provides a work breakdown structure that can be used to plan and schedule the effort of the Project Management activities. / The template was built using all the stages, activities and tasks from the Project Management methodology.

## Calendars

- Standard: Mon-Fri 08:00-12:00, 13:00-17:00; Sat-Sun off. Exceptions (off unless hours are given): 2018-03-10 08:00-12:00, 13:00-17:00.

## Resources

| Resource | Notes |
| --- | --- |
| Project Director | Responsible for management of the project at a strategic level. |
| Project Manager | Responsible for the delivery of a quality project on-schedule, within budget, with a satisfied Acceptor and a motivated project team. |
| Acceptor | Key individual within the business organization who is the principal interface with the project team and who has the authority to accept all deliverables and resolve all project issues (sometimes referred to as the Project Sponsor). |
| Application Architect | Defines the major application systems needed to support the enterprise. During systems development, the Application Architect defines the application solution. |
| Technical Architect | Defines the technologies and standards required to support the application and information architectures. During systems development, the Technical Architect defines the technical solution. |
| Quality Assurance Manager | Responsible for providing confidence to management that the Quality System is being applied. |
| Contracts Manager | Responsible for managing the contractual interfaces with the customer and with subcontractors. |
| 赵磊 |  |
| 华瑞 |  |
| 达实 |  |
| 亿达 |  |
| 亿达未来 |  |

## Schedule

| ID | WBS | Task | Duration | Start | Finish | Predecessors | Complete | Remaining | Total slack | Free slack | Constraint | Resources | Work | Actual work |
| --- | --- | --- | --- | --- | --- | --- | --- | --- | --- | --- | --- | --- | --- | --- |
| 1 | 1 | **一卡通接口调试** | 2d | 2018-02-22 A | 2018-02-23 |  | 8% | 1.83d |  |  |  |  | 96h | 8h |
| 2 | 1.1 | 用户注册 | 1d | 2018-02-22 A | 2018-02-22 A |  | 100% |  |  |  |  | 华瑞 | 8h | 8h |
| 3 | 1.2 | Token注册 | 1d | 2018-02-22 | 2018-02-22 |  |  |  | 12d |  | start no earlier than 2018-02-22 | 华瑞 | 8h |  |
| 4 | 1.3 | 充值 | 1d | 2018-02-22 | 2018-02-22 |  |  |  | 12d |  | finish no earlier than 2018-02-22 | 华瑞 | 8h |  |
| 5 | 1.4 | 挂失 | 1d | 2018-02-22 | 2018-02-22 |  |  |  | 12d |  | finish no earlier than 2018-02-22 | 华瑞 | 8h |  |
| 6 | 1.5 | 解挂 | 1d | 2018-02-22 | 2018-02-22 |  |  |  | 12d |  | finish no earlier than 2018-02-22 | 华瑞 | 8h |  |
| 7 | 1.6 | 充值数据查询 | 1d | 2018-02-22 | 2018-02-22 |  |  |  | 9d | 0d | finish no earlier than 2018-02-22 | 华瑞 | 8h |  |
| 8 | 1.7 | 消费数据查询 | 1d | 2018-02-23 | 2018-02-23 | 7 |  |  | 9d |  |  | 华瑞 | 8h |  |
| 9 | 1.8 | 挂失、解挂、补卡记录查询 | 1d | 2018-02-23 | 2018-02-23 |  |  |  | 11d |  | finish no earlier than 2018-02-23 | 华瑞 | 8h |  |
| 10 | 1.9 | 一卡通余额查询 | 1d | 2018-02-23 | 2018-02-23 |  |  |  | 11d |  | finish no earlier than 2018-02-23 | 华瑞 | 8h |  |
| 11 | 1.10 | 二维码开门 | 1d | 2018-02-23 | 2018-02-23 |  |  |  | 11d |  | finish no earlier than 2018-02-23 | 华瑞 | 8h |  |
| 12 | 1.11 | 访客邀请 | 1d | 2018-02-23 | 2018-02-23 |  |  |  | 11d |  | finish no earlier than 2018-02-23 | 华瑞 | 8h |  |
| 13 | 1.12 | 余额更新（消费） | 1d | 2018-02-23 | 2018-02-23 |  |  |  | 11d |  | start no earlier than 2018-02-23 | 达实 | 8h |  |
| 14 | 2 | **功能开发** | 6d | 2018-02-26 | 2018-03-05 | 1 |  |  |  |  |  |  | 48h |  |
| 15 | 2.1 | 一卡通解挂 | 1d | 2018-02-26 | 2018-02-26 |  |  |  | 10d |  | start no earlier than 2018-02-26 | 华瑞 | 8h |  |
| 16 | 2.2 | 挂失、解挂、补卡记录查询 | 1d | 2018-02-27 | 2018-02-27 |  |  |  | 9d |  | start no earlier than 2018-02-27 | 华瑞 | 8h |  |
| 17 | 2.3 | 支付宝支付功能 | 1d | 2018-02-28 | 2018-02-28 |  |  |  | 8d |  | start no earlier than 2018-02-28 | 华瑞 | 8h |  |
| 18 | 2.4 | 员工APP停车场月卡续费功能 | 1d | 2018-03-01 | 2018-03-01 |  |  |  | 7d |  | start no earlier than 2018-03-01 | 华瑞 | 8h |  |
| 19 | 2.5 | 服务商：商品、订单、流水查询 | 2d | 2018-03-02 | 2018-03-05 |  |  |  | 5d |  | finish no earlier than 2018-03-05 | 华瑞 | 16h |  |
| 20 | 3 | **问题清单** | 8d | 2018-02-22 | 2018-03-05 |  |  |  |  |  |  |  | 32h |  |
| 21 | 3.1 | 界面优化：登陆时验证码大小写不做硬性校验 | 2d | 2018-02-22 | 2018-02-23 |  |  |  | 11d |  | finish no earlier than 2018-02-23 | 华瑞 | 16h |  |
| 22 | 3.2 | 界面优化：右上角通知==0时不显示数字 | 2d | 2018-02-22 | 2018-02-23 |  |  |  | 11d |  | finish no earlier than 2018-02-23 | 华瑞 | 16h |  |
| 23 | 3.3 | 物品放出园区-需要实现：【个人客户】提交申请 - 【企业授权人】审批 | 6d | 2018-02-26 | 2018-03-05 |  |  |  | 5d |  | finish no earlier than 2018-03-05 |  |  |  |
| 24 | 3.4 | 物品放入园区需要实现：【个人客户】提交申请 - 【企业授权人】审批 | 6d | 2018-02-26 | 2018-03-05 |  |  |  | 5d |  | start no earlier than 2018-02-26 |  |  |  |

Notes:
- 1: 赵磊

| ID | WBS | Task | Duration | Start | Finish | Predecessors | Total slack | Constraint | Resources | Work |
| --- | --- | --- | --- | --- | --- | --- | --- | --- | --- | --- |
| 25 | 4 | **华瑞测试** | 7d | 2018-02-22 | 2018-03-02 |  |  |  |  | 264h |
| 26 | 4.1 | 充值 | 2d | 2018-02-22 | 2018-02-23 |  | 11d | finish no earlier than 2018-02-23 | 华瑞 | 16h |
| 27 | 4.2 | 挂失 | 2d | 2018-02-22 | 2018-02-23 |  | 11d | finish no earlier than 2018-02-23 | 华瑞 | 16h |
| 28 | 4.3 | 解挂 | 2d | 2018-02-26 | 2018-02-27 |  | 9d | finish no earlier than 2018-02-27 | 华瑞 | 16h |
| 29 | 4.4 | 充值数据查询 | 2d | 2018-02-26 | 2018-02-27 |  | 9d | finish no earlier than 2018-02-27 | 华瑞 | 16h |
| 30 | 4.5 | 消费数据查询 | 2d | 2018-02-26 | 2018-02-27 |  | 9d | finish no earlier than 2018-02-27 | 华瑞 | 16h |
| 31 | 4.6 | 挂失、解挂、补卡记录查询 | 2d | 2018-02-26 | 2018-02-27 |  | 9d | finish no earlier than 2018-02-27 | 华瑞 | 16h |
| 32 | 4.7 | 一卡通余额查询 | 2d | 2018-02-26 | 2018-02-27 |  | 9d | finish no earlier than 2018-02-27 | 华瑞 | 16h |
| 33 | 4.8 | 二维码开门 | 2d | 2018-02-26 | 2018-02-27 |  | 9d | finish no earlier than 2018-02-27 | 华瑞 | 16h |
| 34 | 4.9 | 访客邀请 | 2d | 2018-02-26 | 2018-02-27 |  | 9d | finish no earlier than 2018-02-27 | 华瑞 | 16h |
| 35 | 4.10 | 余额更新（消费） | 2d | 2018-02-26 | 2018-02-27 |  | 9d | finish no earlier than 2018-02-27 | 华瑞 | 16h |
| 36 | 4.11 | 支付宝支付功能 | 1d | 2018-02-28 | 2018-02-28 |  | 8d | finish no earlier than 2018-02-28 | 华瑞 | 8h |
| 37 | 4.12 | 员工APP停车场月卡续费功能 | 1d | 2018-02-28 | 2018-02-28 |  | 8d | finish no earlier than 2018-02-28 | 华瑞 | 8h |
| 38 | 4.13 | 服务商：商品、订单、流水查询 | 1d | 2018-02-28 | 2018-02-28 |  | 8d | finish no earlier than 2018-02-28 | 华瑞 | 8h |
| 39 | 4.14 | 物品放出园区-需要实现：【个人客户】提交申请 - 【企业授权人】审批 | 1d | 2018-02-28 | 2018-02-28 |  | 8d | finish no earlier than 2018-02-28 | 华瑞 | 8h |
| 40 | 4.15 | 物品放入园区需要实现：【个人客户】提交申请 - 【企业授权人】审批 | 3d | 2018-02-28 | 2018-03-02 |  | 6d | start no earlier than 2018-02-28 | 华瑞 | 24h |
| 41 | 4.16 | 界面优化：登陆时验证码大小写不做硬性校验 | 3d | 2018-02-28 | 2018-03-02 |  | 6d | start no earlier than 2018-02-28 | 华瑞 | 24h |
| 42 | 4.17 | 界面优化：右上角通知==0时不显示数字 | 3d | 2018-02-28 | 2018-03-02 |  | 6d | start no earlier than 2018-02-28 | 华瑞 | 24h |
| 43 | 5 | **集成测试** | 9d | 2018-02-27 | 2018-03-09 | 14, 20 |  |  |  | 416h |
| 44 | 5.1 | 充值 | 2d | 2018-02-27 | 2018-02-28 |  | 8d | finish no earlier than 2018-02-28 | 亿达未来 | 16h |
| 45 | 5.2 | 挂失 | 2d | 2018-02-27 | 2018-02-28 |  | 8d | finish no earlier than 2018-02-28 | 亿达未来 | 16h |
| 46 | 5.3 | 解挂 | 2d | 2018-02-27 | 2018-02-28 |  | 8d | finish no earlier than 2018-02-28 | 亿达未来 | 16h |
| 47 | 5.4 | 充值数据查询 | 2d | 2018-02-27 | 2018-02-28 |  | 8d | finish no earlier than 2018-02-28 | 亿达未来 | 16h |
| 48 | 5.5 | 消费数据查询 | 2d | 2018-02-27 | 2018-02-28 |  | 8d | finish no earlier than 2018-02-28 | 亿达未来 | 16h |
| 49 | 5.6 | 挂失、解挂、补卡记录查询 | 2d | 2018-02-27 | 2018-02-28 |  | 8d | finish no earlier than 2018-02-28 | 亿达未来 | 16h |
| 50 | 5.7 | 一卡通余额查询 | 2d | 2018-03-01 | 2018-03-02 |  | 6d | finish no earlier than 2018-03-02 | 亿达未来 | 16h |
| 51 | 5.8 | 二维码开门 | 2d | 2018-03-01 | 2018-03-02 |  | 6d | finish no earlier than 2018-03-02 | 亿达未来 | 16h |
| 52 | 5.9 | 访客邀请 | 2d | 2018-03-01 | 2018-03-02 |  | 6d | finish no earlier than 2018-03-02 | 亿达未来 | 16h |
| 53 | 5.10 | 余额更新（消费） | 2d | 2018-03-01 | 2018-03-02 |  | 6d | finish no earlier than 2018-03-02 | 亿达未来 | 16h |
| 54 | 5.11 | 支付宝支付功能 | 2d | 2018-03-01 | 2018-03-02 |  | 6d | finish no earlier than 2018-03-02 | 亿达未来 | 16h |
| 55 | 5.12 | 员工APP停车场月卡续费功能 | 5d | 2018-03-05 | 2018-03-09 |  | 1d | start no earlier than 2018-03-05 | 亿达未来 | 40h |
| 56 | 5.13 | 服务商：商品、订单、流水查询 | 5d | 2018-03-05 | 2018-03-09 |  | 1d | start no earlier than 2018-03-05 | 亿达未来 | 40h |
| 57 | 5.14 | 物品放出园区-需要实现：【个人客户】提交申请 - 【企业授权人】审批 | 5d | 2018-03-05 | 2018-03-09 |  | 1d | start no earlier than 2018-03-05 | 亿达未来 | 40h |
| 58 | 5.15 | 物品放入园区需要实现：【个人客户】提交申请 - 【企业授权人】审批 | 5d | 2018-03-05 | 2018-03-09 |  | 1d | start no earlier than 2018-03-05 | 亿达未来 | 40h |
| 59 | 5.16 | 界面优化：登陆时验证码大小写不做硬性校验 | 5d | 2018-03-05 | 2018-03-09 |  | 1d | start no earlier than 2018-03-05 | 亿达未来 | 40h |
| 60 | 5.17 | 界面优化：右上角通知==0时不显示数字 | 5d | 2018-03-05 | 2018-03-09 |  | 1d | start no earlier than 2018-03-05 | 亿达未来 | 40h |

| ID | WBS | Task | Type | Duration | Start | Finish | Predecessors | Total slack |
| --- | --- | --- | --- | --- | --- | --- | --- | --- |
| 61 | 6 | **项目上线** |  | 1d | 2018-03-10 | 2018-03-10 | 1, 14, 20, 25, 43 |  |
| 62 | 6.1 | 说明：从3月10日顺延，Android发布需要半天左右的时间，Aple发布天需要3-5天左右的时间，客户的手机大部分都是android手机 | milestone | 0d | 2018-03-10 | 2018-03-10 |  | 1d |
